# WBS-62015005

Schedule from MS Project, 2021-08-16 to 2022-01-22, costs in $.

## Calendars

- Standard: Mon-Fri 08:00-12:00, 13:00-17:00; Sat-Sun off.

## Resources

| Resource | Rate |
| --- | --- |
| Dev1 | 100 |
| Dev2 | 100 |
| Dev Team | 100 |
| Advisor | 100 |

## Schedule

| ID | WBS | Task | Type | Duration | Start | Finish | Predecessors | Total slack | Free slack | Constraint | Resources | Work | Cost |
| --- | --- | --- | --- | --- | --- | --- | --- | --- | --- | --- | --- | --- | --- |
| 1 | 1 | **Requirement Analysis** |  | 11d? | 2021-08-16 | 2021-08-31 |  |  |  |  |  | 56h | 5,600 |
| 2 | 1.1 | **กำหนดขอบเขตโครงงาน** |  | 1d | 2021-08-17 | 2021-08-17 |  | 42.25d |  |  |  | 8h | 800 |
| 3 | 1.1.1 | ระบุขอบเขตและวัตถุประสงค์ |  | 1d | 2021-08-17 | 2021-08-17 |  | 42.25d | 0d |  | Dev Team | 8h | 800 |
| 4 | 1.2 | **Develop Scope เบื้องต้น** |  | 6d | 2021-08-18 | 2021-08-25 |  | 42.25d |  |  |  | 48h | 4,800 |
| 5 | 1.2.1 | Functional Requirements |  | 3d | 2021-08-18 | 2021-08-20 | 3 | 42.25d | 0d |  | Dev Team | 24h | 2,400 |
| 6 | 1.2.2 | Non Functional Requirements |  | 3d | 2021-08-23 | 2021-08-25 | 5 | 42.25d | 0d |  | Dev Team | 24h | 2,400 |
| 7 | 1.3 | **Data Preparation** |  | 0.75d? | 2021-08-26 | 2021-08-26 |  | 42.25d |  |  |  |  |  |
| 8 | 1.3.1 | Map Digitization |  | 0.75d? | 2021-08-26 | 2021-08-26 | 6 | 42.25d | 3.25d |  |  |  |  |
| 9 | 2 | **Design Phase** |  | 15d | 2021-08-31 | 2021-09-21 |  |  |  |  |  | 84h | 8,400 |
| 10 | 2.1 | UX/UI Design |  | 5d | 2021-09-01 | 2021-09-07 | 8 | 39d | 0d |  | Dev Team | 40h | 4,000 |
| 11 | 2.2 | Database Design |  | 2d | 2021-09-08 | 2021-09-09 | 10 | 39d | 0d |  | Dev Team | 16h | 1,600 |
| 12 | 2.3 | System Architecture Design |  | 0.5d | 2021-09-10 | 2021-09-10 | 11 | 39d | 0d |  | Dev Team | 4h | 400 |
| 13 | 2.4 | Software Architecture Design |  | 1d | 2021-09-10 | 2021-09-13 | 12 | 39d | 0d |  | Dev Team | 8h | 800 |
| 14 | 2.5 | 1st Review |  | 1d | 2021-09-13 | 2021-09-14 | 13 | 39d | 0d |  | Dev Team; Advisor | 16h | 1,600 |
| 15 | 2.6 | Design Phase Complete | milestone | 0d | 2021-09-14 | 2021-09-14 | 14 | 39d | 5.5d |  |  |  |  |
| 16 | 3 | **Implementation** |  | 89d | 2021-09-22 | 2022-01-22 |  |  |  |  |  | 328h | 32,800 |
| 17 | 3.1 | **Status Update Meeting** |  | 45.12d | 2021-08-18 | 2021-10-21 |  | 0d |  |  |  |  |  |
| 18 | 3.1.1 | Status Update Meeting 1 | manual | 1h | 2021-08-18 | 2021-08-19 |  |  |  | start no earlier than 2021-08-18 |  |  |  |
| 19 | 3.1.2 | Status Update Meeting 2 | manual | 1h | 2021-08-25 | 2021-08-26 |  |  |  | start no earlier than 2021-08-25 |  |  |  |
| 20 | 3.1.3 | Status Update Meeting 3 | manual | 1h | 2021-09-01 | 2021-09-02 |  |  |  | start no earlier than 2021-09-01 |  |  |  |
| 21 | 3.1.4 | Status Update Meeting 4 | manual | 1h | 2021-09-08 | 2021-09-09 |  |  |  | start no earlier than 2021-09-08 |  |  |  |
| 22 | 3.1.5 | Status Update Meeting 5 | manual | 1h | 2021-09-15 | 2021-09-16 |  |  |  | start no earlier than 2021-09-15 |  |  |  |
| 23 | 3.1.6 | Status Update Meeting 6 | manual | 1h | 2021-09-22 | 2021-09-23 |  |  |  | start no earlier than 2021-09-22 |  |  |  |
| 24 | 3.1.7 | Status Update Meeting 7 | manual | 1h | 2021-09-29 | 2021-09-30 |  |  |  | start no earlier than 2021-09-29 |  |  |  |
| 25 | 3.1.8 | Status Update Meeting 8 | manual | 1h | 2021-10-06 | 2021-10-07 |  |  |  | start no earlier than 2021-10-06 |  |  |  |
| 26 | 3.1.9 | Status Update Meeting 9 | manual | 1h | 2021-10-13 | 2021-10-14 |  |  |  | start no earlier than 2021-10-13 |  |  |  |
| 27 | 3.1.10 | Status Update Meeting 10 | manual | 1h | 2021-10-20 | 2021-10-21 |  |  |  | start no earlier than 2021-10-20 |  |  |  |

| ID | WBS | Task | Type | Duration | Start | Finish | Predecessors | Total slack | Free slack | Resources | Work | Cost |
| --- | --- | --- | --- | --- | --- | --- | --- | --- | --- | --- | --- | --- |
| 28 | 3.1 | **Tools Study** |  | 10d | 2021-09-22 | 2021-10-05 |  | 33.5d |  |  | 80h | 8,000 |
| 29 | 3.1.1 | study Vue.js |  | 5d | 2021-09-22 | 2021-09-28 | 15 | 33.5d | 0d | Dev1 | 40h | 4,000 |
| 30 | 3.1.2 | study Python |  | 5d | 2021-09-29 | 2021-10-05 | 29 | 33.5d | 0d | Dev2 | 40h | 4,000 |
| 31 | 3.3 | **Account & Login Page** |  | 7d | 2021-10-06 | 2021-10-14 |  | 33.5d |  |  | 56h | 5,600 |
| 32 | 3.3.1 | Front End Develop |  | 3d | 2021-10-06 | 2021-10-08 | 30 | 33.5d | 0d | Dev1 | 24h | 2,400 |
| 33 | 3.3.2 | Backend & API Develop |  | 3d | 2021-10-11 | 2021-10-13 | 32 | 33.5d | 0d | Dev2 | 24h | 2,400 |
| 34 | 3.3.3 | Testing & Approval |  | 1d | 2021-10-14 | 2021-10-14 | 33 | 33.5d | 0d | Dev Team | 8h | 800 |
| 35 | 3.4 | **Basic Information Page** |  | 10.5d | 2021-10-15 | 2021-10-29 |  | 33.5d |  |  | 88h | 8,800 |
| 36 | 3.4.1 | Front End |  | 5d | 2021-10-15 | 2021-10-21 | 34 | 33.5d | 0d | Dev1 | 40h | 4,000 |
| 37 | 3.4.2 | Backend & API |  | 5d | 2021-10-22 | 2021-10-28 | 36 | 33.5d | 0d | Dev2 | 40h | 4,000 |
| 38 | 3.4.3 | Testing & Approval |  | 0.5d | 2021-10-29 | 2021-10-29 | 37 | 33.5d | 0d | Dev Team; Advisor | 8h | 800 |
| 39 | 3.5 | **Server** |  | 5d | 2021-10-29 | 2021-11-05 |  | 33.5d |  |  | 40h | 4,000 |
| 40 | 3.5.1 | รับ Data จาก DLT |  | 5d | 2021-10-29 | 2021-11-05 | 38 | 33.5d | 0d | Dev Team | 40h | 4,000 |
| 41 | 3.6 | **Test Plan** |  | 3d | 2021-11-05 | 2021-11-10 |  | 33.5d |  |  | 24h | 2,400 |
| 42 | 3.6.1 | Review and Approve Test Plan |  | 3d | 2021-11-05 | 2021-11-10 | 40 | 33.5d | 0d | Dev Team | 24h | 2,400 |
| 43 | 3.7 | **UAT (User Acceptance Testing) Document** |  | 3d | 2021-11-10 | 2021-11-15 |  | 33.5d |  |  | 24h | 2,400 |
| 44 | 3.7.1 | Review UAT Document |  | 2d | 2021-11-10 | 2021-11-12 | 42 | 33.5d | 0d | Dev Team | 16h | 1,600 |
| 45 | 3.8.2 | Approve UAT Document |  | 1d | 2021-11-12 | 2021-11-15 | 44 | 33.5d | 0d | Dev Team | 8h | 800 |
| 46 | 3.8 | **Mock Demo - First** |  | 2d | 2021-11-15 | 2021-11-17 |  | 33.5d |  |  | 16h | 1,600 |
| 47 | 3.8.1 | First Demo Meeting |  | 1d | 2021-11-15 | 2021-11-16 | 45 | 33.5d | 0d | Dev Team | 8h | 800 |
| 48 | 3.9.2 | Review Notes for First Mock Demo |  | 1d | 2021-11-16 | 2021-11-17 | 47 | 33.5d | 25.5d | Dev Team | 8h | 800 |
| 49 | 4 | **Acceptance Testing** |  | 8d | 2021-12-23 | 2022-01-03 |  |  |  |  | 32h | 3,200 |
| 50 | 4.1 | Setup Internal Team for UAT |  | 1d | 2021-12-23 | 2021-12-23 | 48 | 8d | 0d | Dev Team | 8h | 800 |
| 51 | 4.2 | UAT (User Acceptance Testing) |  | 3d | 2021-12-24 | 2021-12-28 | 50 | 8d | 0d | Dev Team | 24h | 2,400 |
| 52 | 4.3 | Implementation Phase Complete | milestone | 0d | 2021-12-28 | 2021-12-28 | 51 | 8d | 3d | Dev Team |  |  |

| ID | WBS | Task | Type | Duration | Start | Finish | Predecessors | Total slack | Free slack | Resources | Work | Cost |
| --- | --- | --- | --- | --- | --- | --- | --- | --- | --- | --- | --- | --- |
| 53 | 5 | **Deployment** |  | 11d | 2022-01-02 | 2022-01-14 |  |  |  |  | 64h | 6,400 |
| 54 | 5.1 | **Deploy Infra** |  | 8d | 2022-01-03 | 2022-01-12 |  | 5d |  |  | 64h | 6,400 |
| 55 | 5.1.1 | Deployment Architecture setup |  | 3d | 2022-01-03 | 2022-01-05 | 52 | 5d | 0d | Dev Team | 24h | 2,400 |
| 56 | 5.1.2 | Preliminary Tech Stack Installation |  | 3d | 2022-01-06 | 2022-01-10 | 55 | 5d | 0d | Dev Team | 24h | 2,400 |
| 57 | 5.1.3 | Staging and Production Server Testing |  | 2d | 2022-01-11 | 2022-01-12 | 56 | 5d | 0d | Dev Team | 16h | 1,600 |
| 58 | 5.2 | Deployment Complete | milestone | 0d | 2022-01-12 | 2022-01-12 | 57 | 5d | 2d |  |  |  |
| 59 | 6 | **User Manual Review** |  | 4d | 2022-01-15 | 2022-01-19 |  |  |  |  | 32h | 3,200 |
| 60 | 6.1 | **User Manual** |  | 2d | 2022-01-17 | 2022-01-18 |  | 3d |  |  | 32h | 3,200 |
| 61 | 6.1.1 | Review and Approve User Manual |  | 2d | 2022-01-17 | 2022-01-18 | 58 | 3d |  | Dev Team; Advisor | 32h | 3,200 |
